# proget_manage

Schedule from GanttProject, 2026-09-28 to 2026-09-28.

## Calendars

- Project calendar: Mon-Fri working; Sat-Sun off.

## Schedule

| ID | WBS | Task | Duration | Start | Finish |
| --- | --- | --- | --- | --- | --- |
| 1 | 1 | Decouverte la plateforme de programmation | 1d | 2026-09-28 | 2026-09-28 |
| 2 | 2 | **Developpement logiciel** | 1d | 2026-09-28 | 2026-09-28 |
| 3 | 2.1 | Python : compilation GCode | 1d | 2026-09-28 | 2026-09-28 |
| 4 | 2.2 | Python : vectorisation | 1d | 2026-09-28 | 2026-09-28 |
| 5 | 3 | **Conception module** | 1d | 2026-09-28 | 2026-09-28 |
| 6 | 3.1 | recherche détection aiguille | 1d | 2026-09-28 | 2026-09-28 |
| 7 | 4 | **Developpement CN** | 1d | 2026-09-28 | 2026-09-28 |
| 8 | 4.1 | Test : point, ligne, rond | 1d | 2026-09-28 | 2026-09-28 |
| 9 | 4.2 | Arduino : Déploiment CN | 1d | 2026-09-28 | 2026-09-28 |
| 10 | 4.3 | Arduino : lecture GCode | 1d | 2026-09-28 | 2026-09-28 |
